Schedule from MS Project, 2021-09-15 to 2022-01-05, costs in ¥, A marks actual dates.

## Calendars

- 标准: Mon-Fri 08:00-12:00, 13:00-17:00; Sat-Sun off.

## Resources

| Resource | Rate |
| --- | --- |
| 吴联想 | 49.56 |
| 郑航舰 | 49.56 |
| 王义博 | 49.56 |

## Schedule

| ID | WBS | Task | Type | Duration | Start | Finish | Predecessors | Complete | Remaining | Actual start | Actual finish | Constraint | Resources | Work | Actual work | Cost | Actual cost |
| --- | --- | --- | --- | --- | --- | --- | --- | --- | --- | --- | --- | --- | --- | --- | --- | --- | --- |
| 1 | 1 | **项目开发** |  | 81d? | 2021-09-15 A | 2022-01-05 |  | 69% | 24.76d? |  |  |  |  | 134.4h | 113.4h | 6,660.86 | 5,620.1 |
| 2 | 1.1 | **项目介绍及PPT** |  | 1d | 2021-09-15 A | 2021-09-15 A |  | 100% |  |  |  |  |  | 6h | 6h | 297.36 | 297.36 |
| 3 | 1.1.1 | 课题选择 |  | 0.25d | 2021-09-15 A | 2021-09-15 A |  | 100% |  |  |  |  | 吴联想 | 2h | 2h | 99.12 | 99.12 |
| 4 | 1.1.2 | 项目介绍word |  | 0.25d | 2021-09-15 A | 2021-09-15 A |  | 100% |  |  |  |  | 郑航舰 | 2h | 2h | 99.12 | 99.12 |
| 5 | 1.1.3 | 项目介绍PPT |  | 0.25d | 2021-09-15 A | 2021-09-15 A |  | 100% |  |  |  |  | 王义博 | 2h | 2h | 99.12 | 99.12 |
| 6 | 1.1.4 | 项目介绍评审 | manual | 1d | 2021-09-15 A | 2021-09-15 A |  | 100% |  |  |  |  |  |  |  |  |  |
| 7 | 1.2 | **项目计划及PPT** |  | 6d? | 2021-09-22 A | 2021-09-29 | 2 | 100% |  |  | 2021-09-28 |  |  | 8h | 8h | 396.48 | 396.48 |
| 8 | 1.2.1 | 小组会议 |  | 0.12d? | 2021-09-22 A | 2021-09-22 A |  | 100% |  |  |  |  | 吴联想; 王义博; 郑航舰 | 1h | 1h | 49.56 | 49.56 |
| 9 | 1.2.2 | 项目计划word初稿 |  | 0.25d? | 2021-09-22 A | 2021-09-22 A |  | 100% |  |  |  |  | 郑航舰 | 2h | 2h | 99.12 | 99.12 |
| 10 | 1.2.3 | 小组会议 |  | 0.12d? | 2021-09-24 A | 2021-09-24 A |  | 100% |  |  |  | start no earlier than 2021-09-24 | 吴联想 | 1h | 1h | 49.56 | 49.56 |
| 11 | 1.2.4 | 项目计划初版修订 |  | 0.25d? | 2021-09-27 A | 2021-09-27 A |  | 100% |  |  |  | start no earlier than 2021-09-27 | 郑航舰 | 2h | 2h | 99.12 | 99.12 |
| 12 | 1.2.5 | 项目计划PPT制作 |  | 0.25d? | 2021-09-28 A | 2021-09-28 A |  | 100% |  |  |  | start no earlier than 2021-09-28 | 王义博 | 2h | 2h | 99.12 | 99.12 |
| 13 | 1.2.6 | 项目计划评审 | manual | 1d | 2021-09-22 A | 2021-09-22 A |  | 100% |  |  |  |  |  |  |  |  |  |
| 14 | 1.3 | **项目计划修订** |  | 10d? | 2021-09-30 | 2021-10-13 A | 7 | 100% |  | 2021-10-02 |  |  |  | 13h | 13h | 644.28 | 644.28 |
| 15 | 1.3.1 | 项目计划修订 | manual | 2d | 2021-10-02 A | 2021-10-04 A |  | 100% |  |  |  |  | 郑航舰 | 2h | 2h | 99.12 | 99.12 |
| 16 | 1.3.2 | 小组会议 | manual | 1d | 2021-10-03 A | 2021-10-03 A |  | 100% |  |  |  |  | 吴联想; 王义博; 郑航舰 | 1h | 1h | 49.56 | 49.56 |
| 17 | 1.3.3 | 项目计划PPT修订 | manual | 2d | 2021-10-05 A | 2021-10-06 A |  | 100% |  |  |  |  | 王义博 | 2h | 2h | 99.12 | 99.12 |
| 18 | 1.3.4 | 团建 | manual | 1d | 2021-10-07 A | 2021-10-07 A |  | 100% |  |  |  |  | 吴联想 | 2h | 2h | 99.12 | 99.12 |
| 19 | 1.3.5 | 可行性分析 | manual | 1d | 2021-10-13 A | 2021-10-13 A |  | 100% |  |  |  |  | 吴联想 | 2h | 2h | 99.12 | 99.12 |
| 20 | 1.3.6 | 项目计划书修订 | manual | 1d | 2021-10-13 A | 2021-10-13 A |  | 100% |  |  |  |  | 郑航舰 | 2h | 2h | 99.12 | 99.12 |
| 21 | 1.3.7 | 项目计划PPT修订 | manual | 1d | 2021-10-13 A | 2021-10-13 A |  | 100% |  |  |  |  | 王义博 | 2h | 2h | 99.12 | 99.12 |
| 22 | 1.3.8 | 项目计划评审 | manual | 1d | 2021-10-13 A | 2021-10-13 A |  | 100% |  |  |  |  |  |  |  |  |  |
| 23 | 1.4 | **可行性分析报告** |  | 8d? | 2021-10-14 | 2021-10-23 A | 14 | 100% |  | 2021-10-15 |  |  |  | 29h | 29h | 1,437.24 | 1,437.24 |
| 24 | 1.4.1 | 小组会议 | manual | 1d | 2021-10-22 A | 2021-10-22 A |  | 100% |  |  |  |  | 吴联想; 王义博; 郑航舰 | 1h | 1h | 49.56 | 49.56 |
| 25 | 1.4.2 | 可行性分析报告初稿 | manual | 1d | 2021-10-16 A | 2021-10-16 A |  | 100% |  |  |  |  | 郑航舰 | 2h | 2h | 99.12 | 99.12 |
| 26 | 1.4.3 | 可行性分析 | manual | 1d | 2021-10-15 A | 2021-10-15 A |  | 100% |  |  |  |  | 吴联想 | 2h | 2h | 99.12 | 99.12 |
| 27 | 1.4.4 | 绘制数据流图 | manual | 1d | 2021-10-15 A | 2021-10-15 A |  | 100% |  |  |  |  | 郑航舰 | 2h | 2h | 99.12 | 99.12 |
| 28 | 1.4.5 | 绘制系统流程图 | manual | 1d | 2021-10-15 A | 2021-10-15 A |  | 100% |  |  |  |  | 郑航舰 | 2h | 2h | 99.12 | 99.12 |
| 29 | 1.4.6 | 可行性分析修改 | manual | 1d | 2021-10-16 A | 2021-10-16 A |  | 100% |  |  |  |  | 王义博 | 2h | 2h | 99.12 | 99.12 |
| 30 | 1.4.7 | 可行性分析报告评审 | manual | 1d | 2021-10-20 A | 2021-10-20 A |  | 100% |  |  |  |  |  |  |  |  |  |
| 31 | 1.4.8 | 复查系统规模和目标 | manual | 1d | 2021-10-22 A | 2021-10-22 A |  | 100% |  |  |  |  | 吴联想 | 2h | 2h | 99.12 | 99.12 |
| 32 | 1.4.9 | 研究目前正在使用的系统 | manual | 1d | 2021-10-23 A | 2021-10-23 A |  | 100% |  |  |  |  | 王义博 | 2h | 2h | 99.12 | 99.12 |
| 33 | 1.4.10 | 导出新系统的高层逻辑模型 | manual | 1d | 2021-10-23 A | 2021-10-23 A |  | 100% |  |  |  |  | 王义博 | 2h | 2h | 99.12 | 99.12 |
| 34 | 1.4.11 | 进一步定义问题 | manual | 1d | 2021-10-23 A | 2021-10-23 A |  | 100% |  |  |  |  | 王义博; 吴联想 | 2h | 2h | 99.12 | 99.12 |
| 35 | 1.4.12 | 导出和评价供选择的解法 | manual | 1d | 2021-10-23 A | 2021-10-23 A |  | 100% |  |  |  |  | 王义博; 郑航舰 | 2h | 2h | 99.12 | 99.12 |
| 36 | 1.4.13 | 推荐行动方针 | manual | 1d | 2021-10-23 A | 2021-10-23 A |  | 100% |  |  |  |  | 郑航舰 | 2h | 2h | 99.12 | 99.12 |
| 37 | 1.4.14 | 草拟开发计划 | manual | 1d | 2021-10-23 A | 2021-10-23 A |  | 100% |  |  |  |  |  |  |  |  |  |
| 38 | 1.4.15 | 书写文档提交审查 | manual | 1d | 2021-10-23 A | 2021-10-23 A |  | 100% |  |  |  |  | 吴联想 | 2h | 2h | 99.12 | 99.12 |
| 39 | 1.4.16 | 项目计划书修订 | manual | 1d | 2021-10-23 A | 2021-10-23 A |  | 100% |  |  |  |  | 郑航舰 | 2h | 2h | 99.12 | 99.12 |
| 40 | 1.4.17 | 可行性分析报告修订 | manual | 1d | 2021-10-23 A | 2021-10-23 A |  | 100% |  |  |  |  | 郑航舰 | 2h | 2h | 99.12 | 99.12 |

| ID | WBS | Task | Type | Duration | Start | Finish | Predecessors | Complete | Actual start | Actual finish | Resources | Work | Actual work | Cost | Actual cost |
| --- | --- | --- | --- | --- | --- | --- | --- | --- | --- | --- | --- | --- | --- | --- | --- |
| 41 | 1.5 | **需求说明SRS，需求评审PPT** |  | 8d | 2021-10-21 | 2021-10-31 | 23 | 100% | 2021-10-22 | 2021-10-29 |  | 39h | 39h | 1,932.84 | 1,932.84 |
| 42 | 1.5.1 | 需求说明初稿 | manual | 0.25d | 2021-10-22 A | 2021-10-22 A |  | 100% |  |  | 郑航舰 | 2h | 2h | 99.12 | 99.12 |
| 43 | 1.5.2 | 小组会议 | manual | 1d | 2021-10-23 A | 2021-10-23 A |  | 100% |  |  | 吴联想; 王义博; 郑航舰 | 1h | 1h | 49.56 | 49.56 |
| 44 | 1.5.3 | 界面原型设计 | manual | 1d | 2021-10-24 A | 2021-10-24 A |  | 100% |  |  | 郑航舰 | 2h | 2h | 99.12 | 99.12 |
| 45 | 1.5.4 | **确定对系统的综合要求** |  | 0d | 2021-10-24 A | 2021-10-24 A |  | 100% |  |  | 郑航舰; 吴联想 | 16h | 16h | 792.96 | 792.96 |
| 46 | 1.5.4.1 | 功能需求 | manual | 1d | 2021-10-24 A | 2021-10-24 A |  | 100% |  |  | 吴联想 | 2h | 2h | 99.12 | 99.12 |
| 47 | 1.5.4.2 | 性能需求 | manual | 1d | 2021-10-24 A | 2021-10-24 A |  | 100% |  |  | 吴联想 | 2h | 2h | 99.12 | 99.12 |
| 48 | 1.5.4.3 | 可靠性和可用性需求 | manual | 1d | 2021-10-24 A | 2021-10-24 A |  | 100% |  |  | 吴联想 | 2h | 2h | 99.12 | 99.12 |
| 49 | 1.5.4.4 | 出错处理需求 | manual | 1d | 2021-10-24 A | 2021-10-24 A |  | 100% |  |  | 吴联想 | 2h | 2h | 99.12 | 99.12 |
| 50 | 1.5.4.5 | 接口需求 | manual | 1d | 2021-10-24 A | 2021-10-24 A |  | 100% |  |  | 郑航舰 | 2h | 2h | 99.12 | 99.12 |
| 51 | 1.5.4.6 | 约束 | manual | 1d | 2021-10-24 A | 2021-10-24 A |  | 100% |  |  | 郑航舰 | 2h | 2h | 99.12 | 99.12 |
| 52 | 1.5.4.7 | 逆向需求 | manual | 1d | 2021-10-24 A | 2021-10-24 A |  | 100% |  |  | 郑航舰 | 2h | 2h | 99.12 | 99.12 |
| 53 | 1.5.4.8 | 将来可能提出的需求 | manual | 1d | 2021-10-24 A | 2021-10-24 A |  | 100% |  |  | 郑航舰 | 2h | 2h | 99.12 | 99.12 |
| 54 | 1.5.5 | 分析系统的数据要求 | manual | 1d | 2021-10-24 A | 2021-10-24 A |  | 100% |  |  | 王义博 | 2h | 2h | 99.12 | 99.12 |
| 55 | 1.5.6 | **导出系统的逻辑模型** |  | 0d | 2021-10-24 A | 2021-10-24 A |  | 100% |  |  | 王义博 | 8h | 8h | 396.48 | 396.48 |
| 56 | 1.5.6.1 | 绘制ER图 | manual | 1d | 2021-10-24 A | 2021-10-24 A |  | 100% |  |  | 王义博 | 2h | 2h | 99.12 | 99.12 |
| 57 | 1.5.6.2 | 绘制层次方框图 | manual | 1d | 2021-10-24 A | 2021-10-24 A |  | 100% |  |  | 王义博 | 2h | 2h | 99.12 | 99.12 |
| 58 | 1.5.6.3 | 数据流图 | manual | 1d | 2021-10-24 A | 2021-10-24 A |  | 100% |  |  | 王义博 | 2h | 2h | 99.12 | 99.12 |
| 59 | 1.5.6.4 | 数据字典 | manual | 1d | 2021-10-24 A | 2021-10-24 A |  | 100% |  |  | 王义博 | 2h | 2h | 99.12 | 99.12 |
| 60 | 1.5.7 | 需求说明初稿修改 | manual | 1d | 2021-10-24 A | 2021-10-24 A |  | 100% |  |  | 郑航舰; 王义博; 吴联想 | 2h | 2h | 99.12 | 99.12 |
| 61 | 1.5.8 | 需求说明PPT | manual | 1.12d | 2021-10-24 A | 2021-10-25 A |  | 100% |  |  | 王义博 | 2h | 2h | 99.12 | 99.12 |
| 62 | 1.5.9 | 项目计划书、project更新 | manual | 1d | 2021-10-24 A | 2021-10-24 A |  | 100% |  |  | 郑航舰 | 1h | 1h | 49.56 | 49.56 |
| 63 | 1.5.10 | 根据客户修改界面原型 | manual | 1d | 2021-10-25 A | 2021-10-25 A |  | 100% |  |  | 郑航舰 | 2h | 2h | 99.12 | 99.12 |
| 64 | 1.5.11 | PPT更新 | manual | 1d | 2021-10-27 A | 2021-10-27 A |  | 100% |  |  | 王义博 | 1h | 1h | 49.56 | 49.56 |
| 65 | 1.5.12 | 需求说明预评审 | manual | 1d | 2021-10-27 A | 2021-10-27 A |  | 100% |  |  |  |  |  |  |  |
| 66 | 1.5.13 | 小组会议 | manual | 1d | 2021-10-29 A | 2021-10-29 A |  | 100% |  |  |  |  |  |  |  |

| ID | WBS | Task | Type | Duration | Start | Finish | Predecessors | Complete | Remaining | Actual start | Resources | Work | Actual work | Cost | Actual cost |
| --- | --- | --- | --- | --- | --- | --- | --- | --- | --- | --- | --- | --- | --- | --- | --- |
| 67 | 1.6 | **SRS修订** |  | 5d? | 2021-10-28 | 2021-11-03 A | 41 | 100% |  | 2021-10-31 |  | 13.9h | 13.9h | 688.88 | 688.88 |
| 68 | 1.6.1 | 访谈 | manual | 1d | 2021-10-31 A | 2021-10-31 A |  | 100% |  |  | 吴联想 | 1h | 1h | 49.56 | 49.56 |
| 69 | 1.6.2 | 小组会议 | manual | 1d | 2021-10-31 A | 2021-10-31 A |  | 100% |  |  | 吴联想; 王义博; 郑航舰 | 1h | 1h | 49.56 | 49.56 |
| 70 | 1.6.3 | 需求说明修订 | manual | 1d | 2021-10-31 A | 2021-10-31 A |  | 100% |  |  | 郑航舰 | 0.5h | 0.5h | 24.78 | 24.78 |
| 71 | 1.6.4 | 需求说明PPT修改 | manual | 1d | 2021-10-31 A | 2021-10-31 A |  | 100% |  |  | 王义博 | 2h | 2h | 99.12 | 99.12 |
| 72 | 1.6.5 | 管理员界面模型 | manual | 1d | 2021-10-31 A | 2021-10-31 A |  | 100% |  |  | 王义博 | 2h | 2h | 99.12 | 99.12 |
| 73 | 1.6.6 | 找女用户代表询问并得到反馈 | manual | 1d | 2021-10-31 A | 2021-10-31 A |  | 100% |  |  | 郑航舰 | 1h | 1h | 49.56 | 49.56 |
| 74 | 1.6.7 | 根据用户反馈修改界面原型 | manual | 1d | 2021-10-31 A | 2021-10-31 A |  | 100% |  |  | 郑航舰 | 2h | 2h | 99.12 | 99.12 |
| 75 | 1.6.8 | GIT创建分支 | manual | 1d | 2021-10-31 A | 2021-10-31 A |  | 100% |  |  | 吴联想 | 2h | 2h | 99.12 | 99.12 |
| 76 | 1.6.9 | 更新project | manual | 1d | 2021-10-31 A | 2021-10-31 A |  | 100% |  |  | 郑航舰 | 0.4h | 0.4h | 19.82 | 19.82 |
| 77 | 1.6.10 | SRS评审 | manual | 1d | 2021-11-03 A | 2021-11-03 A |  | 100% |  |  |  |  |  |  |  |
| 78 | 1.6.11 | 界面原型修改 | manual | 1d | 2021-11-03 A | 2021-11-03 A |  | 100% |  |  | 郑航舰 | 2h | 2h | 99.12 | 99.12 |
| 79 | 1.7 | **总体设计报告** |  | 5d? | 2021-11-04 A | 2021-11-10 | 67 | 22% | 3.89d? |  |  | 19.5h | 4.5h | 966.42 | 223.02 |
| 80 | 1.7.1 | 界面原型修改 | manual | 1d | 2021-11-04 A | 2021-11-04 A |  | 100% |  |  | 王义博; 郑航舰 | 1.5h | 1.5h | 74.34 | 74.34 |
| 81 | 1.7.2 | 小组会议 | manual | 1d | 2021-11-05 A | 2021-11-05 A |  | 100% |  |  | 吴联想; 王义博; 郑航舰 | 1h | 1h | 49.56 | 49.56 |
| 82 | 1.7.3 | 总体设计报告初稿 | manual | 1d | 2021-11-05 A | 2021-11-05 A |  | 100% |  |  | 郑航舰 | 1h | 1h | 49.56 | 49.56 |
| 83 | 1.7.4 | 设想供选择的方案 | manual | 1d | 2021-11-05 | 2021-11-05 |  |  |  |  | 郑航舰 | 2h |  | 99.12 |  |
| 84 | 1.7.5 | 选择合理的方案 | manual | 1d | 2021-11-05 | 2021-11-05 |  |  |  |  | 郑航舰 | 2h |  | 99.12 |  |
| 85 | 1.7.6 | 推荐最佳方案 | manual | 1d | 2021-11-05 | 2021-11-05 |  |  |  |  | 王义博; 吴联想; 郑航舰 | 2h |  | 99.12 |  |
| 86 | 1.7.7 | 功能分解 | manual | 1d | 2021-11-05 | 2021-11-05 |  |  |  |  | 王义博 | 2h |  | 99.12 |  |
| 87 | 1.7.8 | 设计软件结构 | manual | 2d | 2021-11-06 | 2021-11-08 |  |  |  |  | 王义博 | 2h |  | 99.12 |  |
| 88 | 1.7.9 | 设计数据库 | manual | 2d | 2021-11-06 | 2021-11-08 |  |  |  |  | 吴联想 | 2h |  | 99.12 |  |
| 89 | 1.7.10 | 制定测试计划 | manual | 2d | 2021-11-06 | 2021-11-08 |  |  |  |  | 吴联想 | 2h |  | 99.12 |  |
| 90 | 1.7.11 | 书写文档 | manual | 1d | 2021-11-06 | 2021-11-06 |  |  |  |  |  |  |  |  |  |
| 91 | 1.7.12 | 审查和复查 | manual | 1d | 2021-11-06 | 2021-11-06 |  |  |  |  |  |  |  |  |  |
| 92 | 1.7.13 | 小组会议 | manual | 1d | 2021-11-05 A | 2021-11-05 A |  | 100% |  |  | 王义博; 吴联想; 郑航舰 | 1h | 1h | 49.56 | 49.56 |
| 93 | 1.7.14 | 总体设计报告预评审 | manual | 1d | 2021-11-10 | 2021-11-10 |  |  |  |  |  |  |  |  |  |
| 94 | 1.7.15 | 小组会议 | manual | 1d | 2021-11-10 | 2021-11-10 |  |  |  |  | 王义博; 吴联想; 郑航舰 | 1h |  | 49.56 |  |

| ID | WBS | Task | Type | Duration | Start | Finish | Predecessors | Resources | Work | Cost |
| --- | --- | --- | --- | --- | --- | --- | --- | --- | --- | --- |
| 95 | 1.8 | **详细设计报告** |  | 5d? | 2021-11-11 | 2021-11-17 | 79 |  | 1h | 49.56 |
| 96 | 1.8.1 | 小组会议 | manual | 1d | 2021-11-12 | 2021-11-12 |  | 王义博; 吴联想; 郑航舰 | 1h | 49.56 |
| 97 | 1.9 | **总体设计及详细设计修订+翻转PPT1** |  | 5d? | 2021-11-18 | 2021-11-24 |  |  | 1h | 49.56 |
| 98 | 1.9.1 | 小组会议 | manual | 1d | 2021-11-19 | 2021-11-19 |  | 吴联想; 王义博 | 1h | 49.56 |
| 99 | 1.10 | **代码清单+测试用例+翻转PPT2** |  | 5d? | 2021-11-25 | 2021-12-01 |  |  | 1h | 49.56 |
| 100 | 1.10.1 | 小组会议 | manual | 1d | 2021-11-25 | 2021-11-25 |  | 王义博; 吴联想; 郑航舰 | 1h | 49.56 |
| 101 | 1.11 | **系统测试报告** |  | 5d? | 2021-12-02 | 2021-12-08 |  |  | 1h | 49.56 |
| 102 | 1.11.1 | 小组会议 | manual | 1d | 2021-12-03 | 2021-12-03 |  | 吴联想; 王义博; 郑航舰 | 1h | 49.56 |
| 103 | 1.12 | **测试报告修订** |  | 5d? | 2021-12-09 | 2021-12-15 |  |  | 1h | 49.56 |
| 104 | 1.12.1 | 小组会议 | manual | 1d | 2021-12-10 | 2021-12-10 |  | 王义博; 吴联想; 郑航舰 | 1h | 49.56 |
| 105 | 1.13 | 项目总结报告，总评审PPT | manual | 10d | 2021-12-16 | 2021-12-29 |  |  |  |  |
| 106 | 1.14 | 课程作业评审 | manual | 1d | 2022-01-05 | 2022-01-05 |  | 王义博; 吴联想; 郑航舰 | 1h | 49.56 |
